# 40 — Storage in the browser (the Web Worker)
#
# Books as git repositories on IndexedDB, a working copy, the home book and
# the index — all owned by one Web Worker. DIRECTION §3, §3.7.

task storage "Storage" {
  depends foundation.app_tooling

  task worker "The Worker and its store protocol" {
    effort 3d
    allocate team
    complete 100
    note "One owner for the data; messages to the main thread's store, read through useSyncExternalStore. The main thread never touches IndexedDB. DIRECTION §3.7. Tests: unit (the message protocol, the store's reducer); behavior (the store fed by the Worker's logic in-process against a fake IndexedDB; components reading slices through useSyncExternalStore re-render only on their change — Testing Library). Sets up the behavior level for the Worker: fake IndexedDB and a local git remote served over HTTP inside the test. Refinement: tasks/refinements/storage/worker.md"
  }
  task fs "The filesystem layer" {
    effort 2d
    allocate team
    complete 100
    depends !worker
    note "lightning-fs behind a small interface, so OPFS can replace it; navigator.storage.persist(). Tests: unit (the filesystem interface's contract suite, run against lightning-fs on a fake IndexedDB so OPFS can later pass the same suite); behavior (persist() asked for once). Refinement: tasks/refinements/storage/fs.md"
  }
  task git "isomorphic-git" {
    effort 3d
    allocate team
    complete 100
    depends !fs
    note "Clone, fetch and push with credentials included to the one origin, protocol v1, a custom HTTP client; never getRemoteInfo2 for push. Tests: behavior (clone, fetch and push against a local git remote over HTTP; credentials included by the custom client; protocol v1; push never calls getRemoteInfo2). Refinement: tasks/refinements/storage/git.md"
  }
  task working_copy "Working copy, save and discard" {
    effort 3d
    allocate team
    complete 100
    depends !git, !locks, cifra_js.writer, cifra_js.setlists
    note "Real files written as the user types; save = canonicalise, commit one file or several, then push; discard; author as the per-user no-reply address. Workflows 3, 4, 14. Tests: unit (the author's no-reply address, canonicalising before commit); behavior (type, save one file and several, discard; the commit holds canonical text; push to the local remote; a marked text refused — workflows 3, 4, 14). Refinement: tasks/refinements/storage/working_copy.md"
  }
  task locks "One lock per book" {
    effort 1d
    allocate team
    complete 100
    depends !git
    note "Web Locks around every git operation, so two tabs never interleave. Tests: behavior (two operations on one book serialised, on two books not; a second tab's operation waits — Web Locks in the test environment). Refinement: tasks/refinements/storage/locks.md"
  }
  task home_book "The home book" {
    effort 2d
    allocate team
    complete 100
    depends !working_copy, design.home_book_format
    note "Committed automatically; settings and the shelf list; merged key by key, the later change winning. Workflows 1, 8, 13. Tests: unit (the key-by-key merge, the later change winning, equal times); behavior (settings changed in two working copies merged through the local remote, committed automatically). Refinement: tasks/refinements/storage/home_book.md"
  }
  task index "The search index" {
    effort 3d
    allocate team
    complete 100
    depends !working_copy, cifra_js.reader
    note "MiniSearch with accent folding; title, properties, sections, words, chords; keyed by blob hash; covers unsaved work; kept in IndexedDB. Workflow 2. Tests: unit (accent folding, the fields, ranking); behavior (the index built in the Worker from a book, updated on save and on unsaved edits, kept across a restart in a fake IndexedDB, keyed by blob hash so unchanged files are not re-read). Refinement: tasks/refinements/storage/index.md"
  }
  task progression_search "Chord-progression search" {
    effort 2d
    allocate team
    complete 100
    depends !index
    note "Chord n-gram field on the MiniSearch index plus a progression-aware query, so a query like 'Am F C G' finds songs that contain that chord run. App-side extension of the search index; the reader's structured item.chord is already available. Workflow 2 (Later, L42). Source of debt: tasks/refinements/storage/index.md (storage.index). Tests: unit (n-gram extraction and progression match); behavior (a progression query finds a song that contains the run, built in the Worker). Refinement: tasks/refinements/storage/progression_search.md"
  }
  task history "History" {
    effort 2d
    allocate team
    complete 100
    depends !working_copy
    note "A song's log following renames, merges hidden unless resolved, versions read as they were, restore into the working copy; the book's whole log for the file view. Workflows 6, 14. Tests: behavior (a song's log following a rename, merges hidden unless resolved, a version read as it was, restore into the working copy, the book's whole log — against a repository built in the test). Refinement: tasks/refinements/storage/history.md"
  }
  task download "Download a book" {
    effort 1d
    allocate team
    depends !working_copy
    note "Zip of the repository as it is on the device, working tree and unsaved changes included, remote removed; Explore Chords' zip writer. Workflow 7. Tests: behavior (the zip of a book with unsaved changes holds the working tree and its .git with no remote; unpacked, the git CLI shows the same log and the unsaved changes)."
  }
  task migrations "On-device versions" {
    effort 1d
    allocate team
    complete 100
    depends !worker
    note "Versioned migrations of what the Worker keeps in IndexedDB; an app update applied on the next launch, never mid-song. Tests: unit (each migration step); behavior (a store at version N opened by N+1 in a fake IndexedDB and migrated; an update held until the next launch). Refinement: tasks/refinements/storage/migrations.md"
  }
  task preferences_surface "Surface preferences from the home book" {
    effort 1d
    allocate team
    complete 100
    depends !home_book, shell.tokens
    note "The Worker reads preferences.json from the home book and emits a PREFERENCES event the reducer folds into the preferences slice (the contract defined by shell.tokens), re-emitted when sync changes a register. DIRECTION §3.2, §3.7; home-book-format §4.1. Source of debt: tasks/refinements/shell/tokens.md (shell.tokens). Tests: unit (a preferences.json map → the event payload of {value, at} registers; an absent register stays absent); behavior (the Worker against a fake IndexedDB and a local git remote surfaces a theme change, the reducer folds it, the ThemeRoot re-applies). Refinement: tasks/refinements/storage/preferences_surface.md"
  }
}
